Task ID,Section,Description,Owner,Dependencies,Pre-requisites,Definition of Done,Status,KPIs,Target Sprint,Artifacts To Track,Validation Method,Estimate (O/M/P),Planned Start,Planned Finish,Percent Complete,Dependency Types,Cadence
IFC-233,Core CRM,"Wire Unused Backend tRPC Endpoints - ~20 built but unused tRPC procedures. Lead: convertToDeal, getHotLeads, getReadyForQualification, bulkScore. Contact: getByEmail, linkToAccount, unlinkFromAccount, search, linkToLead, unlinkFromLead, getTimeline, logActivity. Opportunity: create, getById, getHistory, getProducts, getPipeline, stats. Account: create, update. Task: stats, assign, reschedule. Wire each to appropriate frontend UI or remove if not needed.",Full Stack Dev (STOA-Domain),,FILE:apps/api/src/modules/lead/lead.router.ts;FILE:apps/api/src/modules/contact/contact.router.ts;FILE:apps/api/src/modules/opportunity/opportunity.router.ts;FILE:apps/api/src/modules/account/account.router.ts;FILE:apps/api/src/modules/task/task.router.ts,All listed tRPC procedures either wired to frontend UI or explicitly removed with justification; no dead backend code; tests >=90%,Backlog,Zero unused tRPC procedures remain; all wired endpoints have frontend consumers,20,ARTIFACT:apps/web/src/app/leads/[id]/page.tsx;ARTIFACT:apps/web/src/app/contacts/[id]/page.tsx;EVIDENCE:.specify/sprints/sprint-20/attestations/IFC-233/context_ack.json,VALIDATE:pnpm --filter web typecheck;VALIDATE:pnpm --filter api typecheck;VALIDATE:pnpm --filter web test --run;GATE:coverage-gte-90,60/120/240,,,0,,
IFC-234,Core CRM,"Settings Pages Wiring - 4 settings pages with hardcoded data and inert buttons. Team: hardcoded 4-person array, inert Invite/Remove/Role buttons. Integrations: hardcoded provider list, inert Connect/Disconnect buttons. Notifications: hardcoded const, no useState, no onClick on toggles. Account: profile name/email has no save mutation, 3 security buttons (Change Password, Enable 2FA, Download Data) have no onClick. Wire all to real tRPC mutations and queries.",Frontend Dev (STOA-Quality),,FILE:apps/web/src/app/settings/team/page.tsx;FILE:apps/web/src/app/settings/integrations/page.tsx;FILE:apps/web/src/app/settings/notifications/page.tsx;FILE:apps/web/src/app/settings/account/page.tsx,Team page loads real users from API with working Invite/Remove/Role; Integrations shows real connection status; Notifications toggles persist via mutation; Account profile saves name/email; security buttons functional; tests >=90%,Backlog,All settings pages load real data; mutations complete <500ms; no hardcoded arrays,18,ARTIFACT:apps/web/src/app/settings/team/page.tsx;ARTIFACT:apps/web/src/app/settings/integrations/page.tsx;ARTIFACT:apps/web/src/app/settings/notifications/page.tsx;ARTIFACT:apps/web/src/app/settings/account/page.tsx;EVIDENCE:.specify/sprints/sprint-18/attestations/IFC-234/context_ack.json,VALIDATE:pnpm --filter web typecheck;VALIDATE:pnpm --filter web test --run;GATE:coverage-gte-90,60/120/240,,,0,,
IFC-235,Core CRM,"Lead Detail AI Chat Panel - Add AI chat panel to Lead detail page for entity-scoped conversations. Backend: conversation.router.ts is fully built with 13 endpoints but NOT registered in router.ts - register it. Frontend: build LeadChatPanel component using conversation API with contextType=LEAD, contextId=leadId. Similar to dashboard TeamChatWidget but with real API calls (TeamChatWidget is decorative with hardcoded messages). ConversationRecord/MessageRecord Prisma models exist.",Full Stack Dev (STOA-Domain),IFC-069,FILE:apps/api/src/modules/agent/conversation.router.ts;FILE:apps/api/src/router.ts;FILE:apps/web/src/app/leads/[id]/page.tsx;FILE:apps/web/src/components/dashboard/widgets/TeamChatWidget.tsx,conversation router registered in router.ts; LeadChatPanel component sends/receives messages via API; entity-scoped to current lead; message history persisted; streaming responses; tests >=90%,Backlog,Message send <500ms; chat history loads <1s; real AI responses not hardcoded,22,ARTIFACT:apps/web/src/components/leads/LeadChatPanel.tsx;ARTIFACT:apps/api/src/router.ts;EVIDENCE:.specify/sprints/sprint-22/attestations/IFC-235/context_ack.json,VALIDATE:pnpm --filter web typecheck;VALIDATE:pnpm --filter api typecheck;VALIDATE:pnpm --filter web test --run;GATE:coverage-gte-90,60/120/240,,,0,IFC-069:FS,
IFC-236,Core CRM,Recent Activity Empty State CTA - Overview tab shows generic 'No activities yet' with no call to action. Add 'Log your first activity' CTA button linking to Activity tab textarea. Apply same pattern to Contact detail page. Page: leads/[id]/page.tsx line 1600.,Frontend Dev (STOA-Quality),,FILE:apps/web/src/app/leads/[id]/page.tsx,Recent Activity empty state has 'Log your first activity' CTA; CTA navigates to Activity tab; applied to Contact detail; tests >=90%,Completed,CTA visible on empty state; click navigates correctly,16,ARTIFACT:apps/web/src/app/leads/[id]/page.tsx;ARTIFACT:apps/web/src/app/contacts/[id]/page.tsx;EVIDENCE:.specify/sprints/sprint-16/attestations/IFC-236/attestation.json;SPEC:.specify/sprints/sprint-16/specifications/IFC-236-spec.md;PLAN:.specify/sprints/sprint-16/planning/IFC-236-plan.md,VALIDATE:pnpm --filter web typecheck;VALIDATE:pnpm --filter web test --run;GATE:coverage-gte-90,15/30/60,2026-03-12,2026-03-12,100,,
IFC-237,Core CRM,Lead Router Security - Tenant Isolation & Domain Bypass. Fix 4 CRITICAL/MEDIUM security issues: (1) scoreWithAI fire-and-forget uses raw ctx.prisma instead of prismaWithTenant - cross-tenant data leak risk [S2]. (2) logActivity $transaction uses raw ctx.prisma - may bypass tenant middleware [S3]. (3) bulkUpdateStatus uses direct Prisma updateMany bypassing Lead.changeStatus() domain validation - skips status transition rules and domain events [S4]. (4) getHotLeads/getReadyForQualification pass userId as ownerId without explicit tenantId [S9]. Fix: Replace ctx.prisma with prismaWithTenant in all cases. Route bulkUpdateStatus through domain model. Add explicit tenantId to hot/ready queries.,Backend Dev (STOA-Domain),,,All lead router procedures use prismaWithTenant; bulkUpdateStatus routes through Lead.changeStatus(); getHotLeads has explicit tenantId; tenant isolation integration tests pass; no raw ctx.prisma in lead router,Completed,0 raw ctx.prisma calls in lead.router.ts; tenant isolation test coverage >=90%,16,ARTIFACT:apps/api/src/modules/lead/lead.router.ts;SPEC:.specify/sprints/sprint-16/specifications/IFC-237-spec.md;PLAN:.specify/sprints/sprint-16/planning/IFC-237-plan.md,VALIDATE:pnpm --filter @intelliflow/api test --run;VALIDATE:pnpm --filter @intelliflow/api typecheck;GATE:coverage-gte-90,4/6/8,2026-03-12,2026-03-12,100,,Continuous
IFC-238,Core CRM,"Lead Detail Status Type Fix + Auth Guard. Fix 2 CRITICAL issues: (1) LeadStatus type union at leads/[id]/page.tsx line 139 omits NEGOTIATING - runtime crash when lead has this status [S1]. (2) leads/(list)/new/page.tsx missing useRequireAuth() hook - unauthenticated users can access create lead form [F1]. Also fix trpc vs api import inconsistency in create page [F8]. Fix: Add NEGOTIATING to LeadStatus type, add useRequireAuth() to create page, standardize import.",Frontend Dev (STOA-Quality),,,LeadStatus includes all Prisma LeadStatusEnum values; create page has auth guard; no runtime crash for NEGOTIATING leads; trpc import standardized to api; tests >=90%,Completed,0 missing status values in LeadStatus type; auth guard present on /leads/new,16,ARTIFACT:apps/web/src/app/leads/[id]/page.tsx;ARTIFACT:apps/web/src/app/leads/(list)/new/page.tsx;SPEC:.specify/sprints/sprint-16/specifications/IFC-238-spec.md;PLAN:.specify/sprints/sprint-16/planning/IFC-238-plan.md;EVIDENCE:.specify/sprints/sprint-16/attestations/IFC-238/attestation.json,TypeScript compilation + component tests,1/2/3,2026-03-18,2026-03-19,100,,Continuous
IFC-239,Core CRM,"Lead Router Data Integrity Fixes. Fix 5 HIGH issues: (1) update procedure ambiguous status field handling - may silently drop or bypass domain validation [S5]. (2) Score tier thresholds inconsistent - domain LeadScore uses 80/50 but router stats query uses 70/40 [S6]. (3) sortBy accepts arbitrary strings with no enum validation - Prisma orderBy injection risk [S7]. (4) leadListResponseSchema expects 'data' key but router returns 'leads' [W4]. (5) leadResponseSchema missing Lead 360 fields (aiInsight, activities, notes, files, tasks) [D5]. Fix: Explicitly handle status in update, unify thresholds, add sortBy enum, fix schema keys.",Backend Dev (STOA-Domain),,,update procedure explicitly handles status via domain model; score thresholds unified (single source of truth); sortBy validated against enum; response schemas match actual API output; tests >=90%,Completed,0 schema mismatches; sortBy restricted to enum values; single threshold source,16,apps/api/src/modules/lead/lead.router.ts; packages/validators/src/lead.ts; packages/domain/src/crm/lead/LeadScore.ts,Unit tests + schema validation tests,3/5/7,2026-04-06,2026-04-06,100,,Continuous
IFC-240,Core CRM,"Lead Audit Logging. Add audit log entries to all 20 lead router procedures using SecurityAuditService. GDPR-relevant operations (delete, bulkDelete, convert, export) MUST have audit trail. Include: actor (userId), action, entityType (Lead), entityId, tenantId, timestamp, metadata (old/new values for mutations). Integrate with existing audit infrastructure at apps/api/src/security/audit/.",Backend Dev (STOA-Security),,,All 20 lead procedures emit audit entries; delete/convert/bulk ops have before/after snapshots; audit entries queryable via audit API; GDPR compliance verified; tests >=90%,Backlog,20/20 procedures with audit logging; 100% GDPR-relevant ops covered,18,apps/api/src/modules/lead/lead.router.ts; apps/api/src/security/audit/,Audit log integration tests,4/6/8,,,0,,Continuous
IFC-241,Core CRM,"Lead Router Dead Code & Missing Events Cleanup. Fix 4 MEDIUM/LOW issues: (1) scoreWithAI notification variables at lines 517-527 set but never referenced - dead code [S10]. (2) LeadRoutedEvent defined in domain but never published by any procedure or service [S11]. (3) Only 3 of ~10 lead event types trigger notifications [W10]. (4) Lead notifications processed synchronously, not queued via BullMQ [W11]. Fix: Remove dead notification code, publish LeadRoutedEvent from routing logic, add notification handlers for remaining event types, enqueue via BullMQ.",Backend Dev (STOA-Domain),,,Dead code removed; LeadRoutedEvent published when lead routing occurs; >=8 event types have notification handlers; notifications enqueued via BullMQ; tests >=90%,Backlog,0 dead code blocks; >=8/10 events with notification handlers,20,apps/api/src/modules/lead/lead.router.ts; packages/domain/src/crm/lead/LeadEvents.ts; apps/workers/notifications-worker/,Event publishing + notification tests,4/6/8,,,0,,Continuous
IFC-242,Core CRM,"Lead Create Form Fixes - BANT Drop, Revenue Mapping, Validation. Fix 3 HIGH issues: (1) BANT fields (Budget, Authority, Need, Timeline) collected in create form but silently dropped on submit - never sent to API [F3]. (2) annualRevenue mapped to estimatedValue - semantic mismatch between company annual revenue and deal estimated value [F4]. (3) Edit form uses 'as any' cast with no client-side Zod validation - no inline field errors [F9]. Fix: Send BANT to API (add to createLeadSchema if needed), map annualRevenue correctly, add Zod resolver to edit form, remove as any.",Frontend Dev (STOA-Quality),,,BANT fields persisted on create; annualRevenue and estimatedValue are distinct fields; edit form uses zodResolver with inline errors; no 'as any' casts; sourceOther sent to API; tests >=90%,Backlog,BANT fields round-trip verified; 0 'as any' casts in lead forms,18,apps/web/src/app/leads/(list)/new/page.tsx; apps/web/src/app/leads/[id]/edit/page.tsx; packages/validators/src/lead.ts,Form submission tests + API contract tests,3/5/7,,,0,,Continuous
IFC-243,Core CRM,"Lead Frontend Consistency - StatusBadge, Toast, window.prompt. Fix 3 MEDIUM issues: (1) window.prompt() used for note input at line 1951 - blocks UI, no multi-line, poor UX [F5]. Replace with Dialog/Sheet component. (2) Two different StatusBadge implementations - inline LeadStatusBadge vs shared component with different color schemes [F6]. Consolidate to shared component. (3) Two Toast patterns - sonner toast.success() vs shadcn useToast() used inconsistently across lead pages [F7]. Standardize to one pattern.",Frontend Dev (STOA-Quality),,,Note input uses Dialog component with textarea; single StatusBadge component shared across lead pages; single Toast pattern across all lead pages; tests >=90%,Backlog,0 window.prompt() calls; 1 StatusBadge implementation; 1 Toast pattern,20,apps/web/src/app/leads/[id]/page.tsx; apps/web/src/components/shared/,Component tests + visual regression,2/3/5,,,0,,Continuous
IFC-244,Core CRM,"Dashboard Widget Real Data - ActiveLeads, TotalLeads, Analytics. Fix 3 HIGH/MEDIUM issues: (1) ActiveLeadsWidget fully hardcoded with static '1,240' and 'vs 1,100 last month' [F2]. (2) TotalLeadsWidget shows hardcoded '+12%' trend [W6]. (3) Analytics page for leads uses sample data arrays, no API queries [W7]. Fix: Wire ActiveLeadsWidget to lead.stats API, compute real trend from monthly comparison, wire Analytics page to real lead data endpoints.",Frontend Dev (STOA-Quality),,,ActiveLeadsWidget shows real count from API; TotalLeadsWidget trend computed from actual monthly data; Analytics page queries real lead data; no hardcoded numeric values; tests >=90%,Backlog,0 hardcoded values in dashboard widgets; real data verified against API,20,apps/web/src/components/dashboard/widgets/ActiveLeadsWidget.tsx; apps/web/src/components/dashboard/widgets/TotalLeadsWidget.tsx; apps/web/src/app/analytics/(list)/page.tsx,Widget integration tests + API contract verification,3/4/6,,,0,,Continuous
IFC-245,Core CRM,"Lead Activity Timeline Unification. Fix HIGH issue: logActivity creates LeadActivity records but these are NOT fed into the unified TimelineEvent system (IFC-069). Lead activities exist in a parallel silo [W1]. Also fix: No email-to-lead association - inbound emails not linked to leads by sender address [W2]. Fix: Create TimelineEvent adapter for LeadActivity, add email-to-lead matching in inbound parser, ensure lead detail 'All Sources' toggle shows unified data.",Backend Dev (STOA-Domain),IFC-069:FS,,LeadActivity records appear in unified timeline; inbound emails matched to leads by sender; lead detail All Sources view shows real unified data; tests >=90%,Backlog,LeadActivity → TimelineEvent mapping verified; email-to-lead match rate >0,20,apps/api/src/modules/lead/lead.router.ts; apps/api/src/modules/misc/timeline.ts; apps/api/src/modules/email/inbound.router.ts,Timeline integration tests + email matching tests,4/6/8,,,0,,Continuous
IFC-246,AI Foundation,"Domain Model Lead 360 Alignment. Fix 4 HIGH issues: (1) Lead.toJSON() omits aiInsight, activities, notes, files, tasks relations - domain events carry incomplete snapshots [D1]. (2) qualify() only allows from NEW/CONTACTED but UI doesn't reflect this constraint [D2]. (3) LeadScoringChain throws unhandled error for unknown AI_PROVIDER [D3]. (4) AI scoring prompt only receives basic lead data, ignores activity count, engagement history, note count [D4]. Fix: Extend toJSON, expose allowed transitions, add provider fallback, enrich scoring prompt.",AI Specialist (STOA-Intelligence),,,Lead.toJSON() includes 360 fields; qualify() exposes valid-from-status list; LeadScoringChain gracefully handles unknown providers; scoring prompt includes 360 context; tests >=90%,Backlog,toJSON() includes 5 relation fields; scoring prompt includes >=3 360 data points,20,packages/domain/src/crm/lead/Lead.ts; packages/domain/src/crm/lead/LeadScore.ts; apps/ai-worker/src/chains/,Domain model tests + scoring chain tests,3/5/7,,,0,,Continuous
IFC-247,Core CRM,"Lead Detail Page Tests. Lead detail page (2200+ lines) has ZERO component tests [T1]. Also untested: addNote procedure [T4] and logActivity procedure [T5] added 2026-03-04. Write comprehensive tests: (1) Component render tests for all tabs (Overview, Activity, AI Insights, Lead IQ, Notes, Files, Emails, Tasks). (2) Mutation tests for addNote and logActivity. (3) Error state tests (404, 500, retry). (4) AI insight null-state rendering. (5) Activity feed toggle. Must cover 2026-03-04 wiring fixes.",Frontend Dev (STOA-Quality),,,Lead detail page test file exists with >=20 test cases; addNote mutation tested; logActivity mutation tested; error states tested; AI insight null-state tested; coverage >=90% for tested paths,Backlog,>=20 test cases; coverage >=90% for leads/[id]/page.tsx,18,apps/web/src/app/leads/[id]/__tests__/page.test.tsx,vitest run with coverage,4/6/8,,,0,,Continuous
IFC-248,Core CRM,"Lead List & Create Page Tests. Two major pages with ZERO tests: (1) Lead list page with filtering, sorting, bulk operations, saved views [T2]. (2) Lead create page (1029 lines) with BANT fields, source handling, validation [T3]. Also test: (3) Role-based filtering (ADMIN sees all, others see own) [T7]. (4) Bulk operations UI (score, convert, archive, delete) [T8]. Write component tests covering happy path, error states, and edge cases.",Frontend Dev (STOA-Quality),,,"Lead list test file with >=15 cases (filter, sort, bulk ops, role-based); Lead create test file with >=10 cases (BANT, validation, submission); coverage >=90%",Backlog,>=25 total test cases across 2 files; coverage >=90%,18,apps/web/src/app/leads/(list)/__tests__/page.test.tsx; apps/web/src/app/leads/(list)/new/__tests__/page.test.tsx,vitest run with coverage,4/6/8,,,0,,Continuous
IFC-249,Core CRM,"Lead Edit Page Tests + E2E. Fix remaining test gaps: (1) Edit page onSuccess/onError callbacks untested, as any cast hides type errors [T9]. (2) No E2E tests for complete lead CRUD flow (create -> view -> edit -> delete) [T6]. Write: (1) Edit page component tests with mutation mocking. (2) Playwright E2E test for full lead lifecycle. E2E should cover: create lead with required fields, view on detail page, edit fields, archive/delete.",Frontend Dev (STOA-Quality),,,Edit page test file with >=8 cases; Playwright E2E test for lead CRUD lifecycle; edit page mutation callbacks covered; coverage >=90%,Backlog,>=8 edit page tests; 1 E2E test with >=5 assertions,20,apps/web/src/app/leads/[id]/edit/__tests__/page.test.tsx; tests/e2e/lead-crud.spec.ts,vitest run + playwright test,4/6/8,,,0,,Continuous
IFC-250,Core CRM,"Lead Event Pipeline - Persistent Outbox + Webhooks. Fix HIGH/LOW issues: (1) InMemoryEventBus loses all events on server restart - no persistent outbox pattern [W3]. (2) No webhook handlers for lead events - external systems cannot subscribe [W9]. Fix: Implement transactional outbox pattern for lead domain events (LeadCreatedEvent, LeadQualifiedEvent, etc.). Add webhook dispatch for lead events. Ensure event ordering and at-least-once delivery.",Backend Dev (STOA-Domain),,,Lead events persisted to outbox table; outbox processor dispatches to webhook subscribers; events survive server restart; at-least-once delivery guaranteed; webhook payload schema documented; tests >=90%,Backlog,0 events lost on restart; webhook delivery latency <5s,22,apps/api/src/container.ts; apps/api/src/webhooks/handler.ts; packages/db/prisma/schema.prisma,Outbox integration tests + webhook delivery tests,6/8/12,,,0,,Continuous
IFC-251,Core CRM,"Lead CSV Import/Export. Add bulk import and export for leads [W8]. Import: CSV upload with validation, duplicate detection, field mapping UI, error report. Export: CSV and JSON formats, filtered export (current view), all-fields export. Common CRM feature needed for data migration and reporting. Also cleanup: Prisma schema backslash comments to standard // format [S12].",Frontend Dev (STOA-Quality),,,CSV import with validation UI and error report; CSV/JSON export with filter support; Prisma comments standardized; import handles duplicates gracefully; tests >=90%,Backlog,Import handles >=1000 rows; export completes <5s for 10K leads,24,apps/web/src/app/leads/(list)/; apps/api/src/modules/lead/lead.router.ts,Import/export integration tests,6/8/12,,,0,,Continuous
IFC-252,Core CRM,Contact Router Security — Tenant Isolation Fixes. CRITICAL: (1) search procedure has no createTenantWhereClause — cross-tenant search by name/email (R-02). (2) logActivity transaction uses raw ctx.prisma with no tenantId in WHERE — cross-tenant update (R-03). (3) bulkEmail/bulkExport no tenant filter — email exfiltration via guessed UUIDs (R-04). (4) stats ignores typedCtx tenant — no tenantId boundary (R-05). (5) getById/getByEmail double-fetch through unscoped domain repo (R-06). Cross-ref: R-01 (prismaWithTenant raw) is cross-cutting and shared with IFC-237. Audit: docs/audit/contact-detail-wiring-audit.md §15.,Backend Dev (STOA-Domain),,FILE:docs/audit/contact-detail-wiring-audit.md,All contact router procedures use createTenantWhereClause; logActivity transaction uses prismaWithTenant; search/bulkEmail/bulkExport tenant-scoped; getById/getByEmail cross-check tenantId; tests >=90%,Completed,Zero cross-tenant data leaks in contact procedures,16,ARTIFACT:apps/api/src/modules/contact/contact.router.ts,VALIDATE:pnpm test --filter @intelliflow/api,120/240/480,2026-03-12,2026-03-12,100,,
IFC-253,Core CRM,Contact Detail NaN Fix + Auth Guard + Status Enum. CRITICAL: (1) NaN% division by zero — emailsOpened/emailsSent at line 1319 renders 'NaN%' when emailsSent=0 (F-01). (2) Create contact page missing useRequireAuth() — unauthenticated access (F-07). (3) Status enum truncated to 3 values in ContactList/ContactCard (ACTIVE/INACTIVE/ARCHIVED) but create form allows 6 values — unknown status crashes detail page statusConfig (F-08). Audit: docs/audit/contact-detail-wiring-audit.md §16.,Frontend Dev (STOA-Quality),,FILE:docs/audit/contact-detail-wiring-audit.md,Open Rate handles 0/0 gracefully; create page has useRequireAuth; ContactStatusBadge handles all 5 domain statuses with fallback; tests >=90%,Completed,No NaN renders; auth guard on create; no crash on unknown status,16,ARTIFACT:apps/web/src/app/contacts/[id]/page.tsx;ARTIFACT:apps/web/src/app/contacts/(list)/new/page.tsx;ARTIFACT:apps/web/src/components/contacts/ContactCard.tsx;ARTIFACT:apps/web/src/components/contacts/ContactList.tsx;ARTIFACT:apps/web/src/app/contacts/[id]/page.tsx,VALIDATE:pnpm test --filter @intelliflow/web,60/120/240,,,100,2026-03-12,2026-03-13
IFC-254,Core CRM,"Contact Router Data Integrity Fixes. (1) Raw SQL in getTimeline has no tenant filter and .catch(() => []) swallows errors (R-09). (2) sortBy accepts arbitrary strings — enum whitelist needed (R-10). (3) filterOptions ignores status input (R-12). (4) contactListResponseSchema uses 'data' key but router returns 'contacts' (D-03). (5) phone non-nullable in response schema but mapper returns null (D-08/R-14). Audit: docs/audit/contact-detail-wiring-audit.md §15,§18.",Backend Dev (STOA-Domain),,FILE:docs/audit/contact-detail-wiring-audit.md,getTimeline has tenant filter and proper error handling; sortBy uses enum whitelist; filterOptions respects input; schema keys match router response; phone schema nullable; tests >=90%,Completed,Zero data integrity issues in contact router,16,ARTIFACT:apps/api/src/modules/contact/contact.router.ts;ARTIFACT:packages/validators/src/contact.ts,VALIDATE:pnpm test --filter @intelliflow/api,60/120/240,2026-03-15,2026-03-16,100,SPEC:.specify/sprints/sprint-16/specifications/IFC-254-spec.md;PLAN:.specify/sprints/sprint-16/planning/IFC-254-plan.md,
IFC-255,Core CRM,"Contact Audit Logging. (1) Zero audit logging in all 14 contact router procedures — no ctx.security.auditLogger calls (R-07). (2) Audit event handler PascalCase keys (ContactCreated/Updated/Deleted) don't match domain dot-notation (contact.created/updated) — 5 event types unmapped (D-06). Violates IFC-098 audit requirement. Audit: docs/audit/contact-detail-wiring-audit.md §15,§18.",Backend Dev (STOA-Domain),,FILE:docs/audit/contact-detail-wiring-audit.md,All contact CRUD procedures emit audit events; event handler maps all 8 contact event types; audit trail for create/update/delete/bulk ops; tests >=90%,Backlog,14/14 contact procedures emit audit events,18,ARTIFACT:apps/api/src/modules/contact/contact.router.ts;ARTIFACT:apps/api/src/security/audit-event-handler.ts,VALIDATE:pnpm test --filter @intelliflow/api,120/240/480,,,0,,
IFC-256,Core CRM,"Contact Detail Hardcoded Tabs — Tickets & Documents. (1) Tickets tab fully hardcoded with 'TKT-1234' and static timestamp (F-02, F-21). ContactWithRelations has no tickets relation. Tab badge hardcoded to 0. (2) Documents tab hardcoded with 2 static PDFs — apiContact.documents data exists in interface but is completely ignored (F-03). Need: wire tickets via TicketService query, wire documents from apiContact.documents or file infrastructure. Audit: docs/audit/contact-detail-wiring-audit.md §5,§9,§16.",Frontend Dev (STOA-Quality),,FILE:docs/audit/contact-detail-wiring-audit.md,Tickets tab shows real data from API (or proper empty state); Documents tab renders apiContact.documents; tab badges dynamic; no hardcoded data; tests >=90%,Completed,Zero hardcoded data in Tickets and Documents tabs,18,ARTIFACT:apps/web/src/app/contacts/[id]/page.tsx,VALIDATE:pnpm test --filter @intelliflow/web,120/240/480,2026-06-10,2026-06-10,100,,
IFC-257,Core CRM,"Contact Detail Action Button Wiring. 18 buttons without onClick handlers: Email (1133), Log Call (1139), Log Activity submit (1426), Add Deal (1872), Create Ticket (1917), Upload (1958), Add Note (2007, 2214), View Map (1341), Play Recording (969), Download (1039), Reply/React/Add Note/Share activity actions (1076-1099), toolbar buttons (1410/1415/1420). Zero useMutation calls on entire page (F-04, F-05, F-06, F-23). Need: add logActivity mutation, wire compose/call to existing components, wire action buttons. Audit: docs/audit/contact-detail-wiring-audit.md §11,§16.",Frontend Dev (STOA-Quality),,FILE:docs/audit/contact-detail-wiring-audit.md,Log Activity wired to mutation; Email opens EmailCompose sheet; Add Note wired to addNote mutation; Add Deal navigates to deals/new; activity action buttons functional or removed; tests >=90%,In Progress,>=12 buttons wired to real actions; >=2 useMutation calls on page,18,ARTIFACT:apps/web/src/app/contacts/[id]/page.tsx,VALIDATE:pnpm test --filter @intelliflow/web,240/480/960,2026-06-13,2026-06-13,80,,
IFC-258,Core CRM,"Contact Frontend Consistency — Avatars, Owner Title, Confidence. (1) Default avatars are Unsplash stranger photos — replace with initials-based generated avatar (F-09). (2) Owner title hardcoded 'Account Executive' — map from owner.role like lead detail (F-16). (3) Confidence hardcoded 0.85 for churnRisk and nextBestAction — use API data (F-17). (4) quietPeriodAlert always null (F-22). (5) ContactForm duplicated between create and edit (F-24). Audit: docs/audit/contact-detail-wiring-audit.md §16.",Frontend Dev (STOA-Quality),,FILE:docs/audit/contact-detail-wiring-audit.md,Avatar uses initials fallback; owner title from role; confidence from API; shared ContactForm component; tests >=90%,Backlog,Zero hardcoded fallback values in contact detail,20,ARTIFACT:apps/web/src/app/contacts/[id]/page.tsx;ARTIFACT:apps/web/src/components/contacts/ContactForm.tsx,VALIDATE:pnpm test --filter @intelliflow/web,120/240/480,,,0,,
IFC-259,Core CRM,"Contact Dead UI Fields & Unused Components. (1) location/timezone always empty (F-10). (2) isOnline/isVIP always false — dead badges (F-11). (3) tags always empty array (F-12). (4) ContactDetail.tsx component unused by page — 597 lines with tests but never imported (F-14). (5) ContactCard.tsx unused by list page (F-28). (6) emailsOpened always 0 (F-20). Decision needed: wire to real data, show placeholder states, or remove dead UI. Audit: docs/audit/contact-detail-wiring-audit.md §16.",Frontend Dev (STOA-Quality),,FILE:docs/audit/contact-detail-wiring-audit.md,Dead UI fields either wired to real data or removed with proper empty states; unused components either integrated or deleted; tests >=90%,Backlog,Zero dead UI fields rendering fake values,20,ARTIFACT:apps/web/src/app/contacts/[id]/page.tsx;ARTIFACT:apps/web/src/components/contacts/ContactDetail.tsx;ARTIFACT:apps/web/src/components/contacts/ContactCard.tsx,VALIDATE:pnpm test --filter @intelliflow/web,120/240/480,,,0,,
IFC-260,Core CRM,"Contact Domain Model Fixes. (1) reconstitute() silently substitutes unknown@unknown.com for invalid emails — should Result.fail or throw (D-01). (2) mergeContacts no cross-tenant check — linkToLead correctly checks but merge doesn't (D-02). (3) No ContactDeletedEvent — deleteContact publishes no events, audit handler has mapping but event never emitted (D-04). (4) No ContactEmailChangedEvent — old email not captured in generic ContactUpdatedEvent (D-05). (5) Tags update always emits event without deep equality check (D-07). Audit: docs/audit/contact-detail-wiring-audit.md §18.",Backend Dev (STOA-Domain),,FILE:docs/audit/contact-detail-wiring-audit.md,reconstitute throws on invalid email; mergeContacts checks tenantId; ContactDeletedEvent and ContactEmailChangedEvent added; tags uses deep equality; tests >=90%,Backlog,Domain model passes all invariant tests; zero silent data corruption,20,ARTIFACT:packages/domain/src/crm/contact/Contact.ts;ARTIFACT:packages/domain/src/crm/contact/ContactEvents.ts;ARTIFACT:packages/application/src/services/ContactService.ts,VALIDATE:pnpm test --filter @intelliflow/domain --filter @intelliflow/application,120/240/480,,,0,,
IFC-261,Core CRM,"Contact Event Pipeline — Worker Handlers + Event Types. (1) Zero contact event handlers in events worker (W-02). (2) Only 2/8 contact event types in DOMAIN_EVENT_TYPES — missing deleted, account_associated, account_disassociated, converted_from_lead, linked_to_lead, interacted (W-04). (3) No webhook routing for contact events (W-05). (4) No notifications for contact events (W-11). Cross-ref: W-01 (InMemoryEventBus) shared with IFC-250. Audit: docs/audit/contact-detail-wiring-audit.md §17.",Backend Dev (STOA-Domain),,FILE:docs/audit/contact-detail-wiring-audit.md,Events worker has handlers for all 8 contact event types; DOMAIN_EVENT_TYPES updated; webhook routing for contact events; notification handlers for key events; tests >=90%,Backlog,8/8 contact event types handled; webhook delivery <500ms,22,ARTIFACT:apps/workers/events-worker/src/main.ts;ARTIFACT:apps/workers/events-worker/src/outbox/event-dispatcher.ts,VALIDATE:pnpm test --filter @intelliflow/events-worker,120/240/480,,,0,,
IFC-262,Core CRM,Contact Merge & Duplicate Detection Wiring. (1) mergeContacts deletes secondary without re-parenting all child records — orphaned opportunities/tasks (W-03). (2) findPotentialDuplicates exists in service but no tRPC procedure exposes it (W-09). (3) mergeContacts exists but no router procedure wraps it (W-10). (4) mergeContacts no cross-tenant check between primary and secondary (W-12). (5) associateWithAccount inside mergeContacts causes double-save and potential double event emission (W-13). Audit: docs/audit/contact-detail-wiring-audit.md §17.,Backend Dev (STOA-Domain),,FILE:docs/audit/contact-detail-wiring-audit.md,Merge re-parents all child records before deleting secondary; tRPC procedures for findDuplicates and mergeContacts; cross-tenant check; no double-save; UI merge workflow; tests >=90%,Backlog,Zero orphaned records after merge; duplicate detection accuracy >80%,22,ARTIFACT:apps/api/src/modules/contact/contact.router.ts;ARTIFACT:packages/application/src/services/ContactService.ts,VALIDATE:pnpm test --filter @intelliflow/api --filter @intelliflow/application,240/480/960,,,0,,
IFC-263,Core CRM,Contact Email & AI Integration. (1) No email-to-contact matching — inbound emails not linked to contacts by sender address (W-06). (2) No automated AI insight triggering — contact create/update doesn't trigger scoring like lead does (W-07). (3) No contact routing rules — leads have routing but contacts don't (W-14). Audit: docs/audit/contact-detail-wiring-audit.md §17.,Backend Dev (STOA-Domain),,FILE:docs/audit/contact-detail-wiring-audit.md,Inbound emails matched to contacts by sender address; contact mutations trigger AI scoring; basic contact routing rules; tests >=90%,Backlog,Email-contact match rate >90%; AI scoring triggered on create/update,22,ARTIFACT:apps/api/src/modules/contact/contact.router.ts;ARTIFACT:apps/api/src/modules/email/inbound.router.ts,VALIDATE:pnpm test --filter @intelliflow/api,120/240/480,,,0,,
IFC-264,Core CRM,Contact Bulk Import & Service Layer Fixes. (1) No CSV upload or bulk create for contacts (W-08). (2) listContacts service returns empty array as default when no ownerId/accountId — latent bug for future callers (W-15). (3) getContactStatistics returns empty for undefined ownerId (W-16). Audit: docs/audit/contact-detail-wiring-audit.md §17.,Backend Dev (STOA-Domain),,FILE:docs/audit/contact-detail-wiring-audit.md,CSV import endpoint for contacts; listContacts supports findAll with pagination; getContactStatistics handles ADMIN role; tests >=90%,Backlog,Bulk import handles >=1000 contacts; <5s for 500 row CSV,24,ARTIFACT:apps/api/src/modules/contact/contact.router.ts;ARTIFACT:packages/application/src/services/ContactService.ts,VALIDATE:pnpm test --filter @intelliflow/api,120/240/480,,,0,,
IFC-265,Core CRM,"Contact Detail Page Tests. (1) Contact detail page (2242 lines) has ZERO page-level tests (T-01). (2) Tenant isolation NEVER tested in 2878 lines of router tests (T-04). (3) logActivity missing activity type coverage in tests (T-06). (4) getById relations (activities, notes, opportunities, aiInsight) not asserted (T-07). (5) Tab content rendering not verified in component tests (T-08). Audit: docs/audit/contact-detail-wiring-audit.md §19.",Frontend Dev (STOA-Quality),,FILE:docs/audit/contact-detail-wiring-audit.md,Contact detail page test file with >=20 tests; router tests for tenant isolation; logActivity type coverage; getById relation assertions; tab content verification; coverage >=90%,Backlog,Contact detail page test coverage >=90%,18,ARTIFACT:apps/web/src/app/contacts/[id]/__tests__/page.test.tsx;ARTIFACT:apps/api/src/modules/contact/__tests__/contact.router.tenant.test.ts,VALIDATE:pnpm test --filter @intelliflow/web --filter @intelliflow/api,240/480/960,,,0,,
IFC-266,Core CRM,"Contact List/Create Page Tests + E2E. (1) Contact list page has ZERO page tests (T-02). (2) Contact create page has ZERO page tests — auth guard gap F-07 would be caught (T-03). (3) Bulk selection (select all, bulk email, bulk export) untested (T-05). (4) Contract tests missing for bulkEmail, bulkExport, bulkDelete (T-09). (5) No E2E Playwright tests for contact CRUD flow (T-10). Audit: docs/audit/contact-detail-wiring-audit.md §19.",Frontend Dev (STOA-Quality),,FILE:docs/audit/contact-detail-wiring-audit.md,List page test file with >=10 tests; create page test file with auth guard test; bulk operation tests; contract tests for bulk procedures; E2E create-view-edit-delete flow; coverage >=90%,Backlog,Contact page test coverage >=90%; E2E CRUD flow passing,18,ARTIFACT:apps/web/src/app/contacts/(list)/__tests__/page.test.tsx;ARTIFACT:tests/e2e/contact-crud.spec.ts,VALIDATE:pnpm test --filter @intelliflow/web && npx playwright test,240/480/960,,,0,,
IFC-267,Core CRM,"Account Detail No-Op Action Buttons. Wire 6 non-functional buttons: (1) Create Deal button no onClick (F-05, AccountDetail.tsx:229). (2) Add Contact button no onClick in overview (F-06, AccountDetail.tsx:233). (3-4) Add Contact buttons no onClick in contacts tab header and empty state (F-07/F-08, AccountContactsList.tsx:61,85). (5-6) Create Opportunity buttons no onClick in opportunities tab header and empty state (F-10/F-11, AccountOpportunitiesList.tsx:68,116). Each button should open the appropriate create form or association dialog with accountId pre-filled. Audit: docs/audit/account-detail-wiring-audit.md sections 3-5.",Frontend Dev (STOA-Quality),,FILE:docs/audit/account-detail-wiring-audit.md,All 6 buttons navigate to create form or open association dialog with accountId pre-filled; Create Deal opens deal create with account pre-selected; Add Contact opens contact association or create sheet; Create Opportunity opens opportunity create with account; tests >=90%,Completed,6/6 buttons functional; create forms pre-fill accountId; ContactAddSheet 100/97/100/100% coverage; OpportunityCreateSheet 100/93/100/100% coverage; 109 tests passing,16,ARTIFACT:apps/web/src/components/accounts/AccountDetail.tsx;ARTIFACT:apps/web/src/components/accounts/AccountContactsList.tsx;ARTIFACT:apps/web/src/components/accounts/AccountOpportunitiesList.tsx;ARTIFACT:apps/web/src/components/accounts/OpportunityCreateSheet.tsx;ARTIFACT:apps/web/src/components/accounts/ContactAddSheet.tsx;EVIDENCE:.specify/sprints/sprint-16/attestations/IFC-267/attestation.json,VALIDATE:pnpm test --filter @intelliflow/web,60/120/240,2026-03-12,2026-03-12,100,,
IFC-268,Core CRM,Account Owner Display & Assignment. (1) Owner card shows literal 'Owner Assigned' and 'Account Manager' text instead of actual owner name/title — ownerId exists but owner relation not included in getById (F-01). (2) No owner assignment UI or mutation (F-02). Fix: include owner relation in getById query; display real owner name and role; add owner assignment combobox or dialog with user search mutation. Audit: docs/audit/account-detail-wiring-audit.md section 2.,Frontend Dev (STOA-Quality),,FILE:docs/audit/account-detail-wiring-audit.md;SPEC:.specify/sprints/sprint-16/specifications/IFC-268-spec.md;PLAN:.specify/sprints/sprint-16/planning/IFC-268-plan.md,Owner card displays real owner name and role from API; owner assignment UI with user search; account.update supports ownerId change; tests >=90%,Completed,Owner name renders from API data; 144 tests passing (39 domain + 76 backend + 29 frontend); 0 lint errors,16,ARTIFACT:apps/web/src/components/accounts/AccountDetail.tsx;ARTIFACT:apps/api/src/modules/account/account.router.ts;EVIDENCE:.specify/sprints/sprint-16/attestations/IFC-268/attestation.json,VALIDATE:pnpm test --filter @intelliflow/web --filter @intelliflow/api,120/240/480,2026-03-18,2026-03-19,100,,
IFC-269,Core CRM,"Account Backend Tenant Isolation & Security. (1) CRITICAL: filterOptions uses raw ctx.prisma instead of prismaWithTenant for user lookup — tenant data leak (B-01, account.router.ts:445). (2) PrismaAccountRepository has NO tenantId filter on any method — single-layer defense (B-02). (3) existsByName blocks same name across all tenants — should be per-tenant (B-03). (4) sortBy parameter unsanitized — potential Prisma orderBy injection (B-04). (5) TOCTOU window in update/delete without transaction (B-05). (6) Zero audit logging on all account mutations (B-07). Audit: docs/audit/account-detail-wiring-audit.md sections 11-12.",Backend Dev (STOA-Domain),,FILE:docs/audit/account-detail-wiring-audit.md,filterOptions uses prismaWithTenant; repository methods include tenantId filter; existsByName scoped per-tenant; sortBy validated against allowlist; update/delete wrapped in transaction; auditLogger.log on create/update/delete/setParent; tests >=90%,Completed,Zero cross-tenant data leaks; audit log entries for all mutations,16,ARTIFACT:apps/api/src/modules/account/account.router.ts;ARTIFACT:packages/adapters/src/repositories/PrismaAccountRepository.ts,VALIDATE:pnpm test --filter @intelliflow/api --filter @intelliflow/adapters,120/240/480,2026-04-06,,100,,
IFC-270,Core CRM,Account Router Missing Procedures & Update Fix. (1) Update procedure silently drops revenue/employees/industry/parentAccountId fields accepted by schema (B-08). (2) accountListResponseSchema uses 'data' key but router returns 'accounts' — mismatch (B-09). (3) No updateRevenue procedure — domain Account.updateRevenue() unreachable via API (B-10). (4) No updateEmployeeCount procedure (B-11). (5) No categorizeIndustry procedure (B-12). (6) mapAccountToResponse returns raw WebsiteUrl value object instead of string (B-13). Audit: docs/audit/account-detail-wiring-audit.md section 12.,Backend Dev (STOA-Domain),,FILE:docs/audit/account-detail-wiring-audit.md,Update procedure passes all accepted fields to service; schema key matches router response; updateRevenue/updateEmployeeCount/categorizeIndustry procedures added; WebsiteUrl serialized to string; tests >=90%,Completed,All schema fields persist on update; 3 new procedures functional,18,ARTIFACT:apps/api/src/modules/account/account.router.ts;ARTIFACT:packages/validators/src/account.ts;ARTIFACT:packages/application/src/services/AccountService.ts,VALIDATE:pnpm test --filter @intelliflow/api --filter @intelliflow/validators,120/240/480,2026-06-12,2026-06-13,100,,
IFC-271,Core CRM,Account Domain Model Fixes. (1) No AccountDeletedEvent — deletions produce no domain event; audit handler has mapping but event never emitted (D-01). (2) Account.toJSON() omits tenantId (B-15). (3) updateAccountInfo return value (Result) discarded by service — silent validation failures (B-16). (4) user!.userId non-null assertion in router (B-06). Audit: docs/audit/account-detail-wiring-audit.md sections 11-13.,Backend Dev (STOA-Domain),,FILE:docs/audit/account-detail-wiring-audit.md,AccountDeletedEvent defined and emitted on delete; toJSON includes tenantId; updateAccountInfo Result checked and errors propagated; non-null assertion replaced with proper null check; tests >=90%,Backlog,Delete emits event; zero silent failures,18,ARTIFACT:packages/domain/src/crm/account/Account.ts;ARTIFACT:packages/domain/src/crm/account/AccountEvents.ts;ARTIFACT:packages/application/src/services/AccountService.ts,VALIDATE:pnpm test --filter @intelliflow/domain --filter @intelliflow/application,60/120/240,,,0,,
IFC-272,Core CRM,"Account Event Pipeline — Worker Handlers + Event Types. (1) Zero account event handlers in events worker (W-01). (2) Zero account event types in DOMAIN_EVENT_TYPES map (W-02). (3) Audit handler has 3 account event mappings (Created/Updated/Deleted) but events never reach it because worker has no handlers and dispatcher has no types (W-03). Add event handlers for AccountCreated, AccountUpdated, AccountDeleted (requires IFC-271), AccountRevenueUpdated, AccountHierarchyUpdated, AccountIndustryCategorized to events worker. Register all types in DOMAIN_EVENT_TYPES. Cross-ref: W-01/W-02 pattern shared with Contact (IFC-261). Audit: docs/audit/account-detail-wiring-audit.md section 14.",Backend Dev (STOA-Domain),IFC-271:FS,FILE:docs/audit/account-detail-wiring-audit.md,Events worker has handlers for all 6 account event types; DOMAIN_EVENT_TYPES updated; audit handler receives events; tests >=90%,Backlog,6/6 event types handled; audit trail populated for account mutations,22,ARTIFACT:apps/workers/events-worker/src/main.ts;ARTIFACT:apps/workers/events-worker/src/outbox/event-dispatcher.ts,VALIDATE:pnpm test --filter @intelliflow/events-worker,120/240/480,,,0,,
IFC-273,Core CRM,"Account List Page Type Safety & Filter Enums. (1) serverStats cast to any loses type safety (L-01, AccountsPageClient.tsx:154). (2) Double unsafe cast for withOpportunities stat (L-02, AccountsPageClient.tsx:206-208). (3) AccountTier type and getAccountTier() duplicated locally in AccountCard.tsx instead of using domain enum (L-04). (4) Contact status filter uses hardcoded inline option values instead of ContactStatus domain enum (F-09, AccountContactsList.tsx:81-83). (5) Opportunity stage filter uses hardcoded inline strings instead of OpportunityStage domain enum (F-12, AccountOpportunitiesList.tsx:109-114). Audit: docs/audit/account-detail-wiring-audit.md sections 4-5, 15.",Frontend Dev (STOA-Quality),,FILE:docs/audit/account-detail-wiring-audit.md,Stats query properly typed without any cast; AccountTier uses domain enum; filter dropdowns derive options from domain enums; tests >=90%,In Progress,Zero any casts in account pages; filter options from domain enums,18,ARTIFACT:apps/web/src/app/accounts/(list)/AccountsPageClient.tsx;ARTIFACT:apps/web/src/components/accounts/AccountCard.tsx;ARTIFACT:apps/web/src/components/accounts/AccountContactsList.tsx;ARTIFACT:apps/web/src/components/accounts/AccountOpportunitiesList.tsx,VALIDATE:pnpm test --filter @intelliflow/web,60/120/240,2026-06-13,,20,,
IFC-274,Core CRM,Account Activity Timeline — Replace Stub Data. AccountService.getAccountActivity() (lines 748-785) returns synthetic/stub activities with hardcoded descriptions and broken cursor pagination — not real Activity model records (F-13). Replace with real activity feed from ActivityFeed component or Activity model queries. Should use same pattern as Lead/Contact activity tabs. Audit: docs/audit/account-detail-wiring-audit.md section 6.,Backend Dev (STOA-Domain),,FILE:docs/audit/account-detail-wiring-audit.md,Account activity tab shows real Activity model records; pagination works correctly; no synthetic data; matches Lead/Contact activity pattern; tests >=90%,Backlog,Real activity records displayed; pagination cursor works; <500ms query time,20,ARTIFACT:apps/api/src/modules/account/account.router.ts;ARTIFACT:packages/application/src/services/AccountService.ts;ARTIFACT:apps/web/src/components/accounts/AccountDetail.tsx,VALIDATE:pnpm test --filter @intelliflow/api --filter @intelliflow/web,120/240/480,,,0,,
IFC-275,Core CRM,Account Create & Edit Forms. (1) No account create form page — router has create procedure but no frontend consumer (F-16). Create page at accounts/(list)/new/page.tsx with form for all account fields. (2) No account edit form — Edit button navigates but lands on 404 (F-17). Create edit form page or inline edit mode using router update procedure. Both forms should validate with accountSchema. Audit: docs/audit/account-detail-wiring-audit.md section 10.,Frontend Dev (STOA-Quality),IFC-270:FS,FILE:docs/audit/account-detail-wiring-audit.md,Account create form page at accounts/(list)/new/page.tsx; edit form accessible from detail page; both forms validate and submit via tRPC mutations; success navigation and error handling; auth guard on both pages; tests >=90%,Backlog,Create and edit forms submit successfully; validation errors displayed,20,ARTIFACT:apps/web/src/app/accounts/(list)/new/page.tsx;ARTIFACT:apps/web/src/components/accounts/AccountForm.tsx,VALIDATE:pnpm test --filter @intelliflow/web,120/240/480,,,0,,
IFC-276,Core CRM,Account Contract Test + Test Gaps. (1) Accounts is the ONLY entity without a contract test file (T-01). (2) No-op buttons untested — 6 CRITICAL no-op buttons have no click behavior tests (T-02). (3) Tenant isolation untested in router tests (T-03). (4) No E2E Playwright tests for account CRUD flow (T-04). (5) Owner display untested — tests don't verify owner name/title rendering (T-05). Audit: docs/audit/account-detail-wiring-audit.md section 19.,Frontend Dev (STOA-Quality),IFC-267:FS;IFC-268:FS,FILE:docs/audit/account-detail-wiring-audit.md,Account contract test file created; button click tests verify navigation/dialog; router tests verify tenant isolation; E2E create-view-edit-delete flow; owner rendering tests; coverage >=90%,Backlog,Contract test passing; E2E CRUD flow passing; >=90% coverage,20,ARTIFACT:apps/api/src/__tests__/contract/account.contract.test.ts;ARTIFACT:apps/web/src/components/accounts/__tests__/AccountDetail.buttons.test.tsx;ARTIFACT:tests/e2e/account-crud.spec.ts,VALIDATE:pnpm test --filter @intelliflow/api --filter @intelliflow/web && npx playwright test,240/480/960,,,0,,
IFC-277,Core CRM,"Account Service Dead Code & Minor Fixes. (1) calculateAccountHealth() unreachable from router — decide: wire (D-02). (2) getAccountWithContext() unreachable from router — decide: wire (D-03). (3) Revenue NaN risk — Number(revenue) on non-numeric string renders '$NaNM' (F-14). (4) Health bar arbitrary scale — no documented max value (F-15). (5) Contact firstName[0] undefined risk in AccountContactsList (F-18). (6) findAncestors N+1 query pattern (B-14). (7) Merge/Archive toast stubs referencing IFC-044 (F-03/F-04). Audit: docs/audit/account-detail-wiring-audit.md sections 9, 13, 16-17.",Backend Dev (STOA-Domain),,FILE:docs/audit/account-detail-wiring-audit.md,Dead code either wired to router procedures or removed; revenue NaN guarded with fallback; health bar has documented max; firstName fallback for empty string; findAncestors uses recursive CTE; tests >=90%,Backlog,Zero dead code methods; zero NaN renders; hierarchy query O(1),24,ARTIFACT:packages/application/src/services/AccountService.ts;ARTIFACT:apps/web/src/components/accounts/AccountDetail.tsx;ARTIFACT:packages/adapters/src/repositories/PrismaAccountRepository.ts,VALIDATE:pnpm test --filter @intelliflow/application --filter @intelliflow/web --filter @intelliflow/adapters,120/240/480,,,0,,
IFC-278,Core CRM,"Deal Detail Page — Replace SAMPLE_DEAL with Real API Data. CRITICAL: Entire deal detail page (deals/[id]/page.tsx 792 lines) is 100% hardcoded with SAMPLE_DEAL constant (lines 116-150) — zero API calls. The dealId from useParams() is captured but never used for data fetch (line 684). Must: (1) Replace SAMPLE_DEAL with trpc.opportunity.getById query using dealId param. (2) Add useRequireAuth() guard (F-03 — detail page is the only unguarded page). (3) Fix STAGES constant to match domain 7-stage enum (F-04 — uses CLOSED instead of CLOSED_WON/CLOSED_LOST, omits NEEDS_ANALYSIS). (4) Fix StageProgress to use deal prop instead of SAMPLE_DEAL.value directly (F-05). (5) Remove _SAMPLE_ACTIVITIES dead code (F-06). (6) Add clickable links to account/contact detail pages (F-07). (7) Wire real owner data from getById relation include. Router getById exists (IFC-186). Cross-entity patterns from Lead 360 wiring (2026-03-04) should be followed. Audit: docs/audit/deal-detail-wiring-audit.md section 1.",Frontend Dev (STOA-Quality),,FILE:docs/audit/deal-detail-wiring-audit.md;SPEC:.specify/sprints/sprint-16/specifications/IFC-278-spec.md,Deal detail loads real API data via trpc.opportunity.getById; auth guard present; STAGES matches domain enum; StageProgress uses deal prop; dead code removed; account/contact linked; owner from API; loading/error states; tests >=90%,Completed,Zero SAMPLE_DEAL references; all fields from API; auth guard present,16,ARTIFACT:apps/web/src/app/deals/[id]/page.tsx;PLAN:.specify/sprints/sprint-16/planning/IFC-278-plan.md;EVIDENCE:.specify/sprints/sprint-16/attestations/IFC-278/attestation.json,VALIDATE:pnpm test --filter @intelliflow/web,240/480/960,2026-03-17,2026-03-18,100,,
IFC-279,Core CRM,"Deal Create Form + /deals/new Route. No deal creation form exists — both 'New Deal' buttons (deals/(list)/page.tsx lines 454 and 492) link to /deals/new which is a 404 (F-02). Must: (1) Create page at apps/web/src/app/deals/new/page.tsx or deals/(list)/new/page.tsx. (2) Form fields: name, value (money input), stage (default PROSPECTING), probability, expectedCloseDate (date picker), accountId (account search combobox), contactId (contact search combobox). (3) Wire to trpc.opportunity.create mutation. (4) Add useRequireAuth(). (5) Validate with createOpportunitySchema. (6) Success: navigate to /deals/[newId]. Audit: docs/audit/deal-detail-wiring-audit.md section 1 F-02.",Frontend Dev (STOA-Quality),,FILE:docs/audit/deal-detail-wiring-audit.md,Deal create form page exists; all fields validated; submits via trpc.opportunity.create; success navigates to deal detail; auth guard present; error handling; tests >=90%,Completed,Create form submits successfully; validation errors displayed,16,ARTIFACT:apps/web/src/app/deals/(list)/new/page.tsx;ARTIFACT:apps/web/src/components/deals/DealForm.tsx;SPEC:.specify/sprints/sprint-16/specifications/IFC-279-spec.md;PLAN:.specify/sprints/sprint-16/planning/IFC-279-plan.md;EVIDENCE:.specify/sprints/sprint-16/attestations/IFC-279/attestation.json,VALIDATE:pnpm test --filter @intelliflow/web,120/240/480,2026-03-17,2026-03-17,100,,
IFC-280,Core CRM,Deal Detail Action Buttons — Wire 14 No-Ops. (1) EntityHeader 6 no-ops all with onClick: () => {} (F-08): Won → moveStage CLOSED_WON with success dialog; Lost → moveStage CLOSED_LOST with LossReasonModal (reuse from list page); Edit → navigate to edit form or open inline edit; Clone → duplicate mutation; Archive → set archived status; Delete → AlertDialog confirmation + delete mutation. (2) Stakeholder/Product/File 8 no-ops (F-09): Edit stakeholders → open edit dialog; Account icons → navigate to /accounts/[id] and website; Contact icons → mailto: and tel: links; Add Product → product association dialog; File upload → upload mutation; File links → presigned URL download. Depends on IFC-278 (real data needed for mutations). Audit: docs/audit/deal-detail-wiring-audit.md section 2.,Frontend Dev (STOA-Quality),IFC-278:FS,FILE:docs/audit/deal-detail-wiring-audit.md,Won/Lost buttons trigger moveStage mutations with confirmation; Edit navigates to edit; Clone/Archive/Delete functional with confirmations; stakeholder/product/file buttons all wired; tests >=90%,Completed,14/14 buttons functional; confirmation dialogs for destructive actions,18,ARTIFACT:apps/web/src/app/deals/[id]/page.tsx,VALIDATE:pnpm test --filter @intelliflow/web,240/480/960,2026-06-13,2026-06-13,100,,
IFC-281,Core CRM,Deal Backend Tenant Isolation & Audit Logging. (1) CRITICAL: PrismaOpportunityRepository.findById() (line 82) has NO tenantId WHERE clause — cross-tenant read/write/delete possible via getById/update/delete/moveStage/dealForecast (B-01). Fix: add tenantId to findById() and findByOwnerId() WHERE clauses. (2) CRITICAL: Zero auditLogger.log() calls across all 16 opportunity + pipeline-config procedures (B-02). Add audit logging to create/update/delete/moveStage (especially CLOSED_WON/CLOSED_LOST) and pipeline config changes. (3) Create notification in create procedure uses raw ctx.prisma instead of prismaWithTenant (B-03). Audit: docs/audit/deal-detail-wiring-audit.md sections 5-6.,Backend Dev (STOA-Domain),,FILE:docs/audit/deal-detail-wiring-audit.md,Repository findById/findByOwnerId include tenantId; auditLogger.log on all mutations; notification uses prismaWithTenant; cross-tenant access tests; tests >=90%,Completed,Zero cross-tenant data leaks; audit entries for all 16 procedures,16,ARTIFACT:packages/adapters/src/repositories/PrismaOpportunityRepository.ts;ARTIFACT:apps/api/src/modules/opportunity/opportunity.router.ts;ARTIFACT:apps/api/src/modules/opportunity/pipeline-config.router.ts,VALIDATE:pnpm test --filter @intelliflow/api --filter @intelliflow/adapters,120/240/480,2026-03-18,,100,,SPEC:.specify/sprints/sprint-16/specifications/IFC-281-spec.md;PLAN:.specify/sprints/sprint-16/planning/IFC-281-plan.md
IFC-282,Core CRM,"Deal Router Correctness Fixes. (1) Name updates silently dropped — service has TODO 'Add updateName method' (B-04, OpportunityService.ts:313). Add updateName to domain and wire in service. (2) data.probability?.value unwrapping may be undefined if percentageSchema returns plain number (B-05, router:460). Verify and fix. (3) opportunityListResponseSchema key 'data' vs router key 'opportunities' mismatch (B-07, validators:88 vs router:437). (4) throwOpportunityCreateError maps VALIDATION_ERROR to NOT_FOUND — wrong HTTP semantic (B-09, router:55). (5) validateStageDeactivation throws plain Error → 500 instead of BAD_REQUEST (B-10, validators:214). (6) mapOpportunityToResponse drops closedAt field (B-11, mappers.ts:88-108). (7) CLOSED_LOST no-reason passes Zod but fails at service (B-12, router:322). Audit: docs/audit/deal-detail-wiring-audit.md section 6.",Backend Dev (STOA-Domain),,FILE:docs/audit/deal-detail-wiring-audit.md,Name updates persisted; probability correctly unwrapped; schema key matches router; VALIDATION_ERROR → BAD_REQUEST; validateStageDeactivation throws TRPCError; closedAt included in response; CLOSED_LOST reason properly validated; tests >=90%,Completed,All 7 correctness issues resolved; zero silent data drops,18,ARTIFACT:apps/api/src/modules/opportunity/opportunity.router.ts;ARTIFACT:packages/validators/src/opportunity.ts;ARTIFACT:packages/domain/src/crm/opportunity/Opportunity.ts;ARTIFACT:apps/api/src/shared/mappers.ts,VALIDATE:pnpm test --filter @intelliflow/api --filter @intelliflow/validators --filter @intelliflow/domain,120/240/480,2026-06-13,2026-06-13,100,,
IFC-283,Core CRM,"Deal Event Pipeline — Worker Handlers. (1) Only opportunity.won has a handler in events worker; opportunity.created, opportunity.stage_changed, and opportunity.lost are defined in DOMAIN_EVENT_TYPES but have NO registered handlers (W-01). (2) No OpportunityDescriptionUpdatedEvent defined — description changes emit no event (W-02). Add handlers for the 3 missing event types. Add OpportunityDescriptionUpdatedEvent to domain. Cross-ref: same pattern as Account (IFC-272) and Contact (IFC-261). Audit: docs/audit/deal-detail-wiring-audit.md section 7.",Backend Dev (STOA-Domain),,FILE:docs/audit/deal-detail-wiring-audit.md,Events worker has handlers for opportunity.created/stage_changed/lost; OpportunityDescriptionUpdatedEvent added to domain; all 5 event types handled; tests >=90%,Backlog,5/5 opportunity event types handled in worker,22,ARTIFACT:apps/workers/events-worker/src/main.ts;ARTIFACT:packages/domain/src/crm/opportunity/OpportunityEvents.ts,VALIDATE:pnpm test --filter @intelliflow/events-worker --filter @intelliflow/domain,120/240/480,,,0,,
IFC-284,Core CRM,"Deal Forecast Algorithm Fixes. (1) buildWinRateTrend hardcodes months ['May','Jun','Jul','Aug','Sep','Oct'] regardless of current date — semantically incorrect data (B-06, forecast-algorithm.ts:283). Fix to derive from actual 6-month window. (2) DEFAULT_STAGE_PROBABILITIES diverge: validators has NEEDS_ANALYSIS=30/PROPOSAL=70 while domain/service/router/forecast-algorithm uses 40/60 (B-08). Unify to single source of truth. (3) buildMonthlyRevenue uses locale-dependent toLocaleString for month names — breaks on non-en-US servers (B-15, forecast-algorithm.ts:269). (4) Forecast trend values hardcoded as 12 and 5 in forecast page (F-16, deals/forecast/page.tsx:709-710). Compute from API data. Audit: docs/audit/deal-detail-wiring-audit.md sections 4, 6.",Backend Dev (STOA-Domain),,FILE:docs/audit/deal-detail-wiring-audit.md,Win rate trend months derived from current date; stage probabilities unified to single source; month names locale-independent; forecast trends computed from data; tests >=90%,Backlog,Win rate trend matches actual date window; single probability source,20,ARTIFACT:apps/api/src/shared/forecast-algorithm.ts;ARTIFACT:packages/validators/src/opportunity.ts;ARTIFACT:apps/web/src/app/deals/forecast/page.tsx,VALIDATE:pnpm test --filter @intelliflow/api --filter @intelliflow/validators --filter @intelliflow/web,120/240/480,,,0,,
IFC-285,Core CRM,"Deal Service Dead Code & Minor Fixes. (1) 11 dead service methods unreachable from router: listOpportunities, advanceStage, updateValue, updateProbability, updateExpectedCloseDate, reopenOpportunity, getPipelineForecast, getOpportunitiesClosingSoon, getHighValueOpportunities, getOpportunitiesByAccount, getOpportunitiesByContact, getWinRateStatistics (B-13). Decide: wire to router or remove. (2) toMoney/toPercentage silent zero fallback on DB corruption (B-14). (3) TOCTOU in stage transitions — no optimistic locking (B-16). (4) Event publish failure swallowed with console.error only (B-17). (5) DealQuickView is a 49-line stub not used anywhere (F-13). (6) RecommendedActions.onActionClick not wired at forecast page level (F-18). (7) Sidebar deals config settingsHref points to /settings/deals instead of /settings/pipeline (W-03). Audit: docs/audit/deal-detail-wiring-audit.md sections 6-7.",Backend Dev (STOA-Domain),,FILE:docs/audit/deal-detail-wiring-audit.md,Dead code either wired to router or removed; toMoney/toPercentage propagate errors; event publish has retry; DealQuickView wired or removed; sidebar settingsHref fixed; tests >=90%,Backlog,Zero dead code methods; zero silent error swallowing,24,ARTIFACT:packages/application/src/services/OpportunityService.ts;ARTIFACT:packages/adapters/src/repositories/PrismaOpportunityRepository.ts;ARTIFACT:apps/web/src/components/deals/DealQuickView.tsx;ARTIFACT:apps/web/src/components/sidebar/configs/deals.ts,VALIDATE:pnpm test --filter @intelliflow/application --filter @intelliflow/adapters --filter @intelliflow/web,120/240/480,,,0,,
IFC-286,Core CRM,"Deal Detail Page Tests + E2E. (1) Deal detail page (792 lines) has ZERO test coverage (T-01). (2) No E2E Playwright tests for /deals, /deals/[id], or /deals/forecast — only pipeline-settings has E2E (T-02). (3) No cross-tenant access attempt test in router tests (T-03). (4) Contract test missing NEEDS_ANALYSIS stage in test data (T-04). Depends on IFC-278 (real data) and IFC-280 (wired buttons). Audit: docs/audit/deal-detail-wiring-audit.md section 10.",Frontend Dev (STOA-Quality),IFC-278:FS;IFC-280:FS,FILE:docs/audit/deal-detail-wiring-audit.md,Deal detail page test file with >=20 tests; E2E create-view-edit-delete flow; router tests for cross-tenant access; contract test includes NEEDS_ANALYSIS; coverage >=90%,Backlog,Deal detail page test coverage >=90%; E2E CRUD flow passing,20,ARTIFACT:apps/web/src/app/deals/[id]/__tests__/page.test.tsx;ARTIFACT:tests/e2e/deal-crud.spec.ts;ARTIFACT:apps/api/src/__tests__/contract/opportunity.contract.test.ts,VALIDATE:pnpm test --filter @intelliflow/web --filter @intelliflow/api && npx playwright test,240/480/960,,,0,,
IFC-287,Core CRM,"Deal Filter Wiring & Type Safety. (1) DealFilters state (filters) captured in page but NEVER passed to trpc.opportunity.list.useQuery — ownerId and dateRange selections have no effect on kanban view data (F-10, deals/(list)/page.tsx:214,226). (2) 'More Filters' button has no onClick handler (F-11, DealFilters.tsx). (3) Owner filter only has 2 hardcoded options: 'All Deals' and 'My Deals' — no dynamic user list (F-12). (4) transformDeals uses loose Record<string,unknown> casting at API boundary instead of typed response (F-19, types.ts:102-119). Wire filters to API query params; add server-side owner filter with user list; type-safe API response handling. Audit: docs/audit/deal-detail-wiring-audit.md sections 3, 8.",Frontend Dev (STOA-Quality),,FILE:docs/audit/deal-detail-wiring-audit.md,DealFilters ownerId/dateRange passed to API query; More Filters opens filter panel; owner dropdown shows team members from API; transformDeals properly typed; tests >=90%,Backlog,Filter selections affect displayed data; owner list from API,18,ARTIFACT:apps/web/src/app/deals/(list)/page.tsx;ARTIFACT:apps/web/src/components/deals/DealFilters.tsx;ARTIFACT:apps/web/src/components/deals/types.ts,VALIDATE:pnpm test --filter @intelliflow/web,60/120/240,,,0,,
IFC-288,Core CRM,"Analytics Dashboard Endpoint Wiring. Wire 9 dead analytics router endpoints: exportConversionFunnel, exportMetrics, exportReport, getConversionFunnel, getLeadMetrics, getOverview, getSalesMetrics, getTimeSeriesData, leadStats. Backend built (ANALYTICS-001), zero web callers. Decision: wire to analytics dashboard UI (IFC-037) with charts/export buttons. Audit: artifacts/reports/dead-endpoints-audit.csv rows 20-28.",Frontend Dev (STOA-Quality),IFC-037:FS,FILE:artifacts/reports/dead-endpoints-audit.csv,All 9 analytics endpoints wired to dashboard UI with working charts/exports; zero dead endpoints in analytics router; tests >=90%,Backlog,9/9 analytics endpoints wired to UI,21,ARTIFACT:apps/api/src/modules/analytics/analytics.router.ts;ARTIFACT:apps/web/src/app/analytics/(list)/page.tsx,VALIDATE:pnpm test --filter @intelliflow/api --filter @intelliflow/web,120/240/480,,,0,,
IFC-289,Core CRM,"Agent/Conversation Router Frontend Wiring. 17 dead endpoints (13 conversation.* + 4 agent.*) with zero frontend callers. Frontend uses autoResponse/aiReview/aiMonitoring routers that query the same DB tables directly bypassing the canonical conversation router. Fix: wire all endpoints to proper frontend consumers — chat panel, agent-approvals, AI Search, admin dashboard — and refactor aiMonitoring to delegate to conversation router instead of duplicating DB queries. Audit: artifacts/reports/dead-endpoints-audit.csv rows 4-18.",Frontend Dev (STOA-Quality),IFC-139:FS;IFC-148:FS,FILE:artifacts/reports/dead-endpoints-audit.csv,All 17 endpoints wired to frontend callers; aiMonitoring delegates to conversation router (no duplicate Prisma queries); agent-approvals uses conversation.approveToolCall/escalate/getPendingApprovals; AI Search wires conversation.search; admin dashboard wires getAnalytics/archiveOld; zero dead endpoints in Knip; tests >=90%,Backlog,17/17 dead endpoints wired to frontend consumers,22,ARTIFACT:apps/api/src/modules/agent/conversation.router.ts;ARTIFACT:apps/api/src/modules/agent/agent.router.ts;ARTIFACT:apps/api/src/modules/ai-monitoring/ai-monitoring.router.ts;ARTIFACT:apps/web/src/app/agent-approvals/page.tsx;ARTIFACT:apps/web/src/components/ai-monitoring/AgentLogsViewer.tsx;ARTIFACT:apps/web/src/components/ai-intelligence/AISearchPage.tsx,VALIDATE:pnpm test --filter @intelliflow/api --filter @intelliflow/web,120/240/480,,,0,,
IFC-290,Core CRM,"Integrations Dashboard Endpoint Wiring. Wire 5 dead integrations router endpoints: getAllConnectorsHealth, getConnectorHealth, getConnectorsByType, getDashboardConfig, triggerSync. Backend built (IFC-003), zero web callers. Decision: build integrations settings page to consume these. Audit: artifacts/reports/dead-endpoints-audit.csv rows 61-65.",Frontend Dev (STOA-Quality),,FILE:artifacts/reports/dead-endpoints-audit.csv,All 5 integrations endpoints wired to dashboard UI; zero dead endpoints in integrations router; tests >=90%,Backlog,5/5 integrations endpoints wired to UI,23,ARTIFACT:apps/api/src/modules/integrations/integrations.router.ts,VALIDATE:pnpm test --filter @intelliflow/api --filter @intelliflow/web,120/240/480,,,0,,
IFC-291,Core CRM,"Feedback Submission UI Wiring. Wire 5 dead feedback router endpoints: checkRetraining, exportTrainingData, getForLead, submitCorrection, submitSimple. Backend built (IFC-068), zero web callers. Decision: add feedback UI to AI review workflow. Audit: artifacts/reports/dead-endpoints-audit.csv rows 55-60.",Frontend Dev (STOA-Quality),IFC-068:FS,FILE:artifacts/reports/dead-endpoints-audit.csv,All 5 feedback endpoints wired to feedback UI; zero dead endpoints in feedback router; tests >=90%,Backlog,5/5 feedback endpoints wired to UI,23,ARTIFACT:apps/api/src/modules/feedback/feedback.router.ts,VALIDATE:pnpm test --filter @intelliflow/api --filter @intelliflow/web,120/240/480,,,0,,
IFC-292,Core CRM,"Legal Document Management UI Wiring. Wire 6 dead legal router endpoints: appointments.findNextSlot, documents.grantAccess, documents.placeLegalHold, documents.releaseLegalHold, documents.revokeAccess, documents.submitForReview. Backend built (IFC-137, IFC-140, IFC-152), zero web callers. Decision: build legal management UIs to consume these. Audit: artifacts/reports/dead-endpoints-audit.csv rows 78-83.",Frontend Dev (STOA-Quality),IFC-140:FS;IFC-152:FS,FILE:artifacts/reports/dead-endpoints-audit.csv,All 6 legal endpoints wired to management UI; zero dead endpoints in legal router; tests >=90%,Backlog,6/6 legal endpoints wired to UI,24,ARTIFACT:apps/api/src/modules/legal/documents.router.ts;ARTIFACT:apps/api/src/modules/legal/appointments.router.ts,VALIDATE:pnpm test --filter @intelliflow/api --filter @intelliflow/web,120/240/480,,,0,,
IFC-293,Core CRM,"Security Admin + Notifications Settings Wiring. Wire 6 dead endpoints: security.audit.getByResource, security.audit.getMyActivity, security.audit.getSecurityEvents, notifications.batchAction, notifications.getPreferences, notifications.updatePreferences. Backend built (IFC-098, IFC-072, IFC-046, IFC-157), zero web callers. Decision: build admin security page + notification settings page (PG-116). Audit: artifacts/reports/dead-endpoints-audit.csv rows 93-95, 101-103.",Frontend Dev (STOA-Quality),IFC-157:FS,FILE:artifacts/reports/dead-endpoints-audit.csv,All 6 security/notification endpoints wired to admin pages; zero dead endpoints in security.audit and notifications routers; tests >=90%,Backlog,6/6 security+notification endpoints wired to UI,24,ARTIFACT:apps/api/src/security/audit/audit-logger.ts;ARTIFACT:apps/api/src/modules/notifications/notifications.router.ts,VALIDATE:pnpm test --filter @intelliflow/api --filter @intelliflow/web,120/240/480,,,0,,
IFC-294,Core CRM,"Experiment + Intelligence + AI Monitoring Wiring. Wire 7 dead endpoints: experiment.assignVariant, experiment.recordConversion, experiment.recordScore, intelligence.getInsightsSummary, intelligence.triggerPrediction, intelligence.updateContactInsights, ai-monitoring.getHallucinationReport. Backend built (IFC-025, IFC-095, IFC-117), zero web callers. Decision: wire to experiment dashboard (IFC-181) and AI monitoring page. Audit: artifacts/reports/dead-endpoints-audit.csv rows 19, 52-54, 66-69.",Frontend Dev (STOA-Quality),IFC-025:FS;IFC-095:FS,FILE:artifacts/reports/dead-endpoints-audit.csv,All 7 experiment/intelligence/AI-monitoring endpoints wired to dashboards; zero dead endpoints in these routers; tests >=90%,Backlog,7/7 experiment+intelligence+AI-monitoring endpoints wired to UI,25,ARTIFACT:apps/api/src/modules/intelligence/intelligence.router.ts,VALIDATE:pnpm test --filter @intelliflow/api --filter @intelliflow/web,120/240/480,,,0,,
IFC-295,Core CRM,"Billing/Auth/Subscription/Admin Miscellaneous Wiring. Wire 8 dead endpoints: billing.ensureCustomer, billing.getUsageMetrics, billing.updateBillingInformation, auth.getSessions, subscription.getPlans, subscription.toggleModule, autoresponse.submitForApproval, admin.queues.getByName. Backend built across IFC-006/IFC-014/IFC-028/IFC-099, zero web callers. admin.queues.getByName is completely phantom (no tests, no matrix entry) � needs queue inspector or admin tools UI. Audit: artifacts/reports/dead-endpoints-audit.csv rows 2, 29, 33-37, 104-105.",Frontend Dev (STOA-Quality),,FILE:artifacts/reports/dead-endpoints-audit.csv,All 8 miscellaneous endpoints wired to appropriate UI pages; zero dead endpoints in billing/auth/subscription/autoresponse/admin routers; tests >=90%,Backlog,8/8 misc endpoints wired to UI,25,ARTIFACT:apps/api/src/modules/billing/billing.router.ts;ARTIFACT:apps/api/src/modules/auth/auth.router.ts,VALIDATE:pnpm test --filter @intelliflow/api --filter @intelliflow/web,120/240/480,,,0,,
